How a schedule from MS Project changed from version to version. A marks actual dates.

## Version 1 (saved 2017-06-06)

Note of the change: Arquivo Microsoft Project

| ID | WBS | Task | Duration | Start | Finish | Predecessors | Complete | Total float |
| --- | --- | --- | --- | --- | --- | --- | --- | --- |
| 1 | 1 | **Projeto** | 51d | 2017-03-31 A | 2017-06-09 |  | 98% | 0d |
| 2 | 1.1 | **Atividade Prática 2** | 47d | 2017-03-31 A | 2017-06-05 A |  | 100% |  |
| 3 |  | Elicitação de Requisitos | 15d | 2017-03-31 A | 2017-04-20 A |  | 100% |  |
| 4 |  | Diagrama de Casos de Uso | 3d | 2017-04-27 A | 2017-05-01 A | 3 | 100% |  |
| 5 |  | Documento de especificação | 0d | 2017-06-05 A | 2017-06-05 A |  | 100% |  |
| 6 |  | Documento de especificação suplementar | 0d | 2017-06-05 A | 2017-06-05 A |  | 100% |  |
| 7 | 1.2 | **Atividade Prática 3** | 20d | 2017-04-28 | 2017-05-25 A |  | 100% |  |
| 8 |  | Diagrama de Fluxo de Dados | 8d | 2017-05-01 A | 2017-05-10 A | 3 | 100% |  |
| 9 |  | Pesquisa de média salarial | 1d | 2017-05-17 A | 2017-05-17 A |  | 100% |  |
| 10 |  | Métrica Ponto de Função | 6d | 2017-05-18 A | 2017-05-25 A | 8 | 100% |  |
| 11 | 1.3 | **Atividade Prática 4** | 21d | 2017-05-12 | 2017-06-09 |  | 100% |  |
| 12 |  | Grafico de Gantt | 10d | 2017-05-24 A | 2017-06-06 A |  | 100% |  |
| 13 |  | Grafico de Gantt de Controle | 8d | 2017-05-26 A | 2017-06-06 A | 12SS+2d | 100% |  |
| 14 |  | Diagrama de Rede | 0d | 2017-06-06 A | 2017-06-06 A |  | 100% |  |
| 15 |  | Lista e informações sobre riscos | 6d | 2017-05-18 A | 2017-05-25 A |  | 100% |  |
| 16 |  | Documento de Planejamento e Acompanhamento | 0d | 2017-06-05 A | 2017-06-05 A |  | 100% |  |
| 17 | 1.4 | **Atividade Prática 5** | 10d | 2017-05-19 | 2017-06-01 A |  | 100% |  |
| 18 |  | Protótipos da interface do sistema | 6d | 2017-05-19 A | 2017-05-26 A |  | 100% |  |
| 19 |  | Codificação do sistema | 14d | 2017-05-15 A | 2017-06-01 A | 18SS+2d | 100% |  |
| 20 |  | Manual do Usuário | 3d | 2017-05-29 A | 2017-05-31 A | 18 | 100% |  |
| 21 | 1.5 | **Atividade Prática 6** | 11d | 2017-05-26 | 2017-06-09 |  | 50% |  |
| 22 |  | Plano de Teste | 1d | 2017-06-02 A | 2017-06-02 A | 19 | 100% |  |
| 23 |  | Testes Funcionais | 1d | 2017-06-05 A | 2017-06-05 A | 22 | 100% |  |
| 24 |  | Teste Beta | 1d | 2017-06-07 | 2017-06-07 | 23 |  |  |
| 25 |  | Homologação | 1d | 2017-06-09 | 2017-06-09 |  |  |  |

## Version 2 (saved 2017-06-07)

Note of the change: Gráfico de Gantt.

Last finish stays 2017-06-09. Complete tasks 17 → 18.

Changed:

| ID | Task | Start | Finish | Complete |
| --- | --- | --- | --- | --- |
| 1 | **Projeto** |  |  | 98% → 99% |
| 21 | **Atividade Prática 6** |  |  | 50% → 75% |
| 24 | Teste Beta | 2017-06-07 A | 2017-06-07 A | 0% → 100% |
